# Year 3 Project Plan 7 30

Schedule from MS Project, 2008-07-14 to 2008-09-25, A marks actual dates.
Persistent Systems Pvt. Ltd.

## Calendars

- Standard: Mon-Fri 08:00-12:00, 13:00-17:00; Sat-Sun off. Exceptions (off unless hours are given): 2008-08-15 (Holiday).

## Resources

| Resource |
| --- |
| Chandrakant Talele |
| Lalit Chand |
| Chetan Patil |
| Atul Jawale |
| Hrishikesh Rajpathak |
| Rushikesh Subhedar |
| Deepak Shingan |

## Schedule

| ID | WBS | Task | Duration | Start | Finish | Predecessors | Complete | Remaining | Total slack | Free slack | Constraint | Resources | Work | Actual work |
| --- | --- | --- | --- | --- | --- | --- | --- | --- | --- | --- | --- | --- | --- | --- |
| 1 | 1 | **Milestone 1** | 53d? | 2008-07-14 A | 2008-09-25 |  | 67% | 17.23d? | 0d |  |  |  | 1200h | 848h |
| 2 | 1.1 | **caB2B_Y3_020Technology Stack Migration** | 27d | 2008-07-14 A | 2008-08-20 A |  | 100% |  |  |  |  |  | 200h | 200h |
| 3 | 1.1.1 | **Migrate to Jboss 4.0.5 GA** | 2d | 2008-07-14 A | 2008-07-15 A |  | 100% |  |  |  |  |  | 16h | 16h |
| 4 | 1.1.1.1 | Changes in existing codebase | 1d | 2008-07-14 A | 2008-07-14 A |  | 100% |  |  |  | start no earlier than 2008-07-14 | Lalit Chand | 8h | 8h |
| 5 | 1.1.1.2 | Changes in deployment process | 1d | 2008-07-15 A | 2008-07-15 A | 4 | 100% |  |  |  |  | Lalit Chand | 8h | 8h |
| 6 | 1.1.2 | **Migrate to EJB 3.0** | 13d | 2008-07-16 A | 2008-08-01 A |  | 100% |  |  |  |  |  | 72h | 72h |
| 7 | 1.1.2.1 | Understanding EJB 3.0 | 5d | 2008-07-16 A | 2008-07-22 A | 5 | 100% |  |  |  |  | Lalit Chand | 40h | 40h |
| 8 | 1.1.2.2 | Changes in existing codebase | 3d | 2008-07-23 A | 2008-07-25 A | 7 | 100% |  |  |  |  | Lalit Chand | 24h | 24h |
| 9 | 1.1.2.3 | Changes in deployment process | 1d | 2008-07-28 A | 2008-07-28 A | 8 | 100% |  |  |  |  | Lalit Chand | 8h | 8h |
| 10 | 1.1.2.4 | Testing and verifications | 4d | 2008-07-29 A | 2008-08-01 A | 9 | 100% |  |  |  |  |  |  |  |
| 11 | 1.1.3 | Reverting back EJB 3.0 changes | 3d | 2008-08-04 A | 2008-08-06 A | 6 | 100% |  |  |  |  | Lalit Chand | 24h | 24h |
| 12 | 1.1.4 | **Query Module** | 12d | 2008-08-04 A | 2008-08-20 A |  | 100% |  |  |  |  |  | 88h | 88h |
| 13 | 1.1.4.1 | Query Module Release UI | 3d | 2008-08-18 A | 2008-08-20 A | 85 | 100% |  |  |  |  | Deepak Shingan | 24h | 24h |
| 14 | 1.1.4.2 | Query Module Release backend changes | 8d | 2008-08-04 A | 2008-08-20 A | 99 | 100% |  |  |  | start no earlier than 2008-08-04 | Chetan Patil | 64h | 64h |
| 15 | 1.2 | Moving to caGrid 1.2 | 4d | 2008-07-14 | 2008-07-17 |  |  |  | 49d |  |  | Hrishikesh Rajpathak | 32h |  |
| 16 | 1.3 | **Session Management of EJB (For user based expr and queries)** | 13d | 2008-08-07 A | 2008-08-26 |  | 60% | 5.2d | 12d | 0d |  |  | 40h | 24h |
| 17 | 1.3.1 | Understand stateful EJBs | 5d | 2008-08-07 A | 2008-08-26 | 14 | 60% | 2d | 12d |  |  | Lalit Chand | 40h | 24h |
| 18 | 1.4 | **caB2B_Y3_002-User based experiments** | 5d? | 2008-08-27 | 2008-09-02 | 16 |  |  | 12d | 0d |  |  | 40h |  |
| 19 | 1.4.1 | Requirement | 1d? | 2008-08-27 | 2008-08-27 |  |  |  | 12d | 0d |  | Lalit Chand | 8h |  |
| 20 | 1.4.2 | Design | 1d? | 2008-08-28 | 2008-08-28 | 19 |  |  | 12d | 0d |  | Lalit Chand | 8h |  |
| 21 | 1.4.3 | **Implementation** | 3d? | 2008-08-29 | 2008-09-02 |  |  |  | 12d |  |  |  | 24h |  |
| 22 | 1.4.3.1 | Saving experiments on user basis | 1d? | 2008-08-29 | 2008-08-29 | 20 |  |  | 12d | 0d |  | Lalit Chand | 8h |  |
| 23 | 1.4.3.2 | Changes needed at client-server interface to pass user info | 1d? | 2008-09-01 | 2008-09-01 | 22 |  |  | 12d | 0d |  | Lalit Chand | 8h |  |
| 24 | 1.4.3.3 | Fetch and display experiments based on user | 1d? | 2008-09-02 | 2008-09-02 | 23 |  |  | 12d |  |  | Lalit Chand | 8h |  |

| ID | WBS | Task | Duration | Start | Finish | Predecessors | Complete | Remaining | Total slack | Free slack | Constraint | Resources | Work | Actual work |
| --- | --- | --- | --- | --- | --- | --- | --- | --- | --- | --- | --- | --- | --- | --- |
| 25 | 1.5 | **caB2B_Y3_003-User based saved queries** | 5d? | 2008-09-03 | 2008-09-09 |  |  |  | 12d |  |  |  | 40h |  |
| 26 | 1.5.1 | Requirement | 1d? | 2008-09-03 | 2008-09-03 | 18 |  |  | 12d | 0d |  | Lalit Chand | 8h |  |
| 27 | 1.5.2 | Design | 1d? | 2008-09-04 | 2008-09-04 | 26 |  |  | 12d | 0d |  | Lalit Chand | 8h |  |
| 28 | 1.5.3 | **Implementation** | 3d? | 2008-09-05 | 2008-09-09 |  |  |  | 12d |  |  |  | 24h |  |
| 29 | 1.5.3.1 | Saving queries on user basis | 1d? | 2008-09-05 | 2008-09-05 | 27 |  |  | 12d | 0d |  | Lalit Chand | 8h |  |
| 30 | 1.5.3.2 | Changes needed at client-server interface to pass user info | 1d? | 2008-09-08 | 2008-09-08 | 29 |  |  | 12d | 0d |  | Lalit Chand | 8h |  |
| 31 | 1.5.3.3 | Fetch and display experiments based on user | 1d? | 2008-09-09 | 2008-09-09 | 30 |  |  | 12d |  |  | Lalit Chand | 8h |  |
| 32 | 1.6 | **caB2B_Y3_001-Automatic cache update between admin and cab2b server** | 20d? | 2008-07-14 | 2008-08-08 |  |  |  | 33d |  |  |  |  |  |
| 33 | 1.6.1 | Requirement | 1d? | 2008-07-14 | 2008-07-14 |  |  |  | 52d |  |  |  |  |  |
| 34 | 1.6.2 | **Investigation** | 1d? | 2008-07-14 | 2008-07-14 |  |  |  | 52d |  |  |  |  |  |
| 35 | 1.6.2.1 | Investigate Component | 1d? | 2008-07-14 | 2008-07-14 |  |  |  | 52d |  |  |  |  |  |
| 36 | 1.6.2.2 | Developing Prototype | 1d? | 2008-07-14 | 2008-07-14 |  |  |  | 52d |  |  |  |  |  |
| 37 | 1.6.2.3 | Design | 1d? | 2008-07-14 | 2008-07-14 |  |  |  | 52d |  |  |  |  |  |
| 38 | 1.6.3 | **Implementation** | 20d? | 2008-07-14 | 2008-08-08 |  |  |  | 33d |  |  |  |  |  |
| 39 | 1.6.3.1 | Separating out Implementation Deployment Unit | 1d? | 2008-07-14 | 2008-07-14 |  |  |  | 52d |  |  |  |  |  |
| 40 | 1.6.3.2 | Changes needed in Deployment Process | 1d? | 2008-08-08 | 2008-08-08 |  |  |  | 33d |  | finish no earlier than 2008-08-08 |  |  |  |
| 41 | 1.6.4 | **Representing grid user in caB2B** | 1d? | 2008-07-14 | 2008-07-14 |  |  |  | 52d |  |  |  |  |  |
| 42 | 1.6.4.1 | Investigating APIs needed | 1d? | 2008-07-14 | 2008-07-14 |  |  |  | 52d |  |  |  |  |  |
| 43 | 1.6.4.2 | Design to store user identity locally | 1d? | 2008-07-14 | 2008-07-14 |  |  |  | 52d |  |  |  |  |  |
| 44 | 1.6.4.3 | Design review by external parties | 1d? | 2008-07-14 | 2008-07-14 |  |  |  | 52d |  |  |  |  |  |
| 45 | 1.7 | **Schedular component + notification functionality** | 37d | 2008-07-29 A | 2008-09-18 |  | 13% | 32.38d | 0d |  |  |  | 128h | 16h |
| 46 | 1.7.1 | **Schedular** | 28d | 2008-07-29 A | 2008-09-05 |  | 29% | 20d | 0d |  |  |  | 56h | 16h |
| 47 | 1.7.1.1 | Investigate Component | 2d | 2008-07-29 A | 2008-07-30 A |  | 100% |  |  |  |  | Chetan Patil | 16h | 16h |
| 48 | 1.7.1.2 | Developing Prototype | 5d | 2008-09-01 | 2008-09-05 |  |  |  | 0d |  | start no earlier than 2008-09-01 | Chetan Patil | 40h |  |

| ID | WBS | Task | Duration | Start | Finish | Predecessors | Complete | Remaining | Total slack | Constraint | Resources | Work | Actual work |
| --- | --- | --- | --- | --- | --- | --- | --- | --- | --- | --- | --- | --- | --- |
| 49 | 1.7.2 | **Notification** | 9d | 2008-09-08 | 2008-09-18 |  |  |  | 0d |  |  | 72h |  |
| 50 | 1.7.2.1 | UI mockup | 1d | 2008-09-08 | 2008-09-08 | 48 |  |  | 0d |  | Chetan Patil | 8h |  |
| 51 | 1.7.2.2 | UI implementation | 3d | 2008-09-09 | 2008-09-11 | 50 |  |  | 0d |  | Chetan Patil | 24h |  |
| 52 | 1.7.2.3 | Backend Implementation | 5d | 2008-09-12 | 2008-09-18 | 51 |  |  | 0d |  | Chetan Patil | 40h |  |
| 53 | 1.8 | **caB2B_Y3_004-Asynchronous execution of queries** | 5d? | 2008-09-19 | 2008-09-25 | 45 |  |  | 0d |  |  | 40h |  |
| 54 | 1.8.1 | Requirement | 1d? | 2008-09-19 | 2008-09-19 |  |  |  | 0d |  | Chetan Patil | 8h |  |
| 55 | 1.8.2 | Design | 1d? | 2008-09-22 | 2008-09-22 | 54 |  |  | 0d |  | Chetan Patil | 8h |  |
| 56 | 1.8.3 | **Implementation** | 3d? | 2008-09-23 | 2008-09-25 | 55 |  |  | 0d |  |  | 24h |  |
| 57 | 1.8.3.1 | Represent schedule | 1d? | 2008-09-23 | 2008-09-23 |  |  |  | 0d |  | Chetan Patil | 8h |  |
| 58 | 1.8.3.2 | Storing schedule and firing jobs | 1d? | 2008-09-24 | 2008-09-24 | 57 |  |  | 0d |  | Chetan Patil | 8h |  |
| 59 | 1.8.3.3 | Implementing job for query execution | 1d? | 2008-09-25 | 2008-09-25 | 58 |  |  | 0d |  | Chetan Patil | 8h |  |
| 60 | 1.9 | **caB2B_Y3_005-User to override the URLs** | 18d? | 2008-08-13 A | 2008-09-08 |  | 65% | 6.35d? | 13d |  |  | 136h | 88h |
| 61 | 1.9.1 | Requirement | 1d | 2008-08-13 A | 2008-08-13 A | 93 | 100% |  |  |  | Atul Jawale | 8h | 8h |
| 62 | 1.9.2 | UI mockups | 1d | 2008-08-14 A | 2008-08-14 A | 61 | 100% |  |  |  | Atul Jawale | 8h | 8h |
| 63 | 1.9.3 | Design | 1d | 2008-08-18 A | 2008-08-18 A | 62 | 100% |  |  |  | Atul Jawale | 8h | 8h |
| 64 | 1.9.4 | **Implementation** | 15d? | 2008-08-19 A | 2008-09-08 | 63 | 57% | 6.43d? | 13d |  |  | 112h | 64h |
| 65 | 1.9.4.1 | UI implementation | 4d | 2008-08-19 A | 2008-08-22 A |  | 100% |  |  |  | Atul Jawale | 32h | 32h |
| 66 | 1.9.4.2 | Backend integration | 4d | 2008-08-25 A | 2008-08-28 A | 65 | 100% |  |  |  | Atul Jawale | 32h | 32h |
| 67 | 1.9.4.3 | Unit testing | 6d? | 2008-09-01 | 2008-09-08 |  |  |  | 13d | start no earlier than 2008-09-01 | Atul Jawale | 48h |  |
| 68 | 1.10 | **caB2B_Y3_006-Home page experiments links functional + show all** | 12d | 2008-07-14 A | 2008-07-29 A |  | 100% |  |  |  |  | 96h | 96h |
| 69 | 1.10.1 | Requirement | 1d | 2008-07-14 A | 2008-07-14 A |  | 100% |  |  | start no earlier than 2008-07-14 | Deepak Shingan | 8h | 8h |
| 70 | 1.10.2 | UI Mockups | 1d | 2008-07-15 A | 2008-07-15 A | 69 | 100% |  |  |  | Deepak Shingan | 8h | 8h |
| 71 | 1.10.3 | Design | 1d | 2008-07-16 A | 2008-07-16 A | 70 | 100% |  |  |  | Deepak Shingan | 8h | 8h |
| 72 | 1.10.4 | **Implementation** | 9d | 2008-07-17 A | 2008-07-29 A |  | 100% |  |  |  |  | 72h | 72h |
| 73 | 1.10.4.1 | Showing recent experiments | 2d | 2008-07-17 A | 2008-07-18 A | 71 | 100% |  |  |  | Deepak Shingan | 16h | 16h |
| 74 | 1.10.4.2 | Making links in stack box funtional | 2d | 2008-07-21 A | 2008-07-22 A | 73 | 100% |  |  |  | Deepak Shingan | 16h | 16h |
| 75 | 1.10.4.3 | Show All to display all experiments on right side | 3d | 2008-07-23 A | 2008-07-25 A | 74 | 100% |  |  |  | Deepak Shingan | 24h | 24h |
| 76 | 1.10.4.4 | Click on any experiment from show all table to open experiment | 2d | 2008-07-28 A | 2008-07-29 A | 75 | 100% |  |  |  | Deepak Shingan | 16h | 16h |

| ID | WBS | Task | Duration | Start | Finish | Predecessors | Complete | Remaining | Total slack | Constraint | Resources | Work | Actual work |
| --- | --- | --- | --- | --- | --- | --- | --- | --- | --- | --- | --- | --- | --- |
| 77 | 1.11 | **caB2B_Y3_007-Home page category links functional + show all** | 12d | 2008-07-30 A | 2008-08-14 A |  | 100% |  |  |  |  | 96h | 96h |
| 78 | 1.11.1 | Requirement | 1d | 2008-07-30 A | 2008-07-30 A | 68 | 100% |  |  |  | Deepak Shingan | 8h | 8h |
| 79 | 1.11.2 | UI Mockups | 1d | 2008-07-31 A | 2008-07-31 A | 78 | 100% |  |  |  | Deepak Shingan | 8h | 8h |
| 80 | 1.11.3 | Design | 1d | 2008-08-01 A | 2008-08-01 A | 79 | 100% |  |  |  | Deepak Shingan | 8h | 8h |
| 81 | 1.11.4 | **Implementation** | 9d | 2008-08-04 A | 2008-08-14 A |  | 100% |  |  |  |  | 72h | 72h |
| 82 | 1.11.4.1 | Showing all categories | 2d | 2008-08-04 A | 2008-08-05 A | 80 | 100% |  |  |  | Deepak Shingan | 16h | 16h |
| 83 | 1.11.4.2 | Clicking on category in stack box to open add limit page | 2d | 2008-08-06 A | 2008-08-07 A | 82 | 100% |  |  |  | Deepak Shingan | 16h | 16h |
| 84 | 1.11.4.3 | Show All to display all categories on right side | 3d | 2008-08-08 A | 2008-08-12 A | 83 | 100% |  |  |  | Deepak Shingan | 24h | 24h |
| 85 | 1.11.4.4 | Click on any category from show all table to open it in add limit page | 2d | 2008-08-13 A | 2008-08-14 A | 84 | 100% |  |  |  | Deepak Shingan | 16h | 16h |
| 86 | 1.12 | **caB2B_Y3_008-Popular categories** | 27d? | 2008-07-28 A | 2008-09-03 |  | 86% | 3.86d? | 16d |  |  | 168h | 144h |
| 87 | 1.12.1 | Requirement | 8d | 2008-07-28 A | 2008-08-06 A |  | 100% |  |  | start no earlier than 2008-07-28 | Hrishikesh Rajpathak | 64h | 64h |
| 88 | 1.12.2 | Design | 5d | 2008-08-07 A | 2008-08-14 A | 87 | 100% |  |  | finish no earlier than 2008-08-14 | Hrishikesh Rajpathak | 40h | 40h |
| 89 | 1.12.3 | **Implementation** | 13d? | 2008-08-18 A | 2008-09-03 |  | 63% | 4.88d? | 16d |  |  | 64h | 40h |
| 90 | 1.12.3.1 | Calculating popularity | 2d | 2008-08-18 A | 2008-08-19 A | 88 | 100% |  |  |  | Hrishikesh Rajpathak | 16h | 16h |
| 91 | 1.12.3.2 | Storing and using popularity | 3d | 2008-08-20 A | 2008-08-22 A | 90 | 100% |  |  | finish no earlier than 2008-08-08 | Hrishikesh Rajpathak | 24h | 24h |
| 92 | 1.12.3.3 | Unit Testing | 3d? | 2008-09-01 | 2008-09-03 |  |  |  | 16d | finish no earlier than 2008-09-03 | Hrishikesh Rajpathak | 24h |  |
| 93 | 1.13 | **caB2B_Y3_009-Fixing the current washU services for index service** | 21d | 2008-07-14 A | 2008-08-11 A |  | 100% |  |  |  |  | 168h | 168h |
| 94 | 1.13.1 | Learning service, discovery and metadata | 5d | 2008-07-14 A | 2008-07-18 A |  | 100% |  |  |  | Atul Jawale | 40h | 40h |
| 95 | 1.13.2 | Finding the cause | 5d | 2008-07-21 A | 2008-07-25 A | 94 | 100% |  |  |  | Atul Jawale | 40h | 40h |
| 96 | 1.13.3 | Investigating on fixes / solutions | 5d | 2008-07-28 A | 2008-08-01 A | 95 | 100% |  |  |  | Atul Jawale | 40h | 40h |
| 97 | 1.13.4 | Fixing Services | 6d | 2008-08-04 A | 2008-08-11 A | 96 | 100% |  |  |  | Atul Jawale | 48h | 48h |
| 98 | 1.14 | **Bugs** | 2d | 2008-07-31 A | 2008-08-01 A |  | 100% |  |  |  |  | 16h | 16h |
| 99 | 1.14.1 | Bug# 8070 | 2d | 2008-07-31 A | 2008-08-01 A | 47 | 100% |  |  | start no earlier than 2008-08-04 | Chetan Patil | 16h | 16h |
| 100 | 2 | caTissue core service instance | 1d | 2008-08-12 A | 2008-08-12 A |  | 100% |  |  | start no earlier than 2008-08-08 | Atul Jawale | 8h | 8h |
| 101 | 3 | Bug 9090 & 9138 fix | 2d? | 2008-08-26 A | 2008-08-27 A |  | 100% |  |  | finish no earlier than 2008-08-27 | Chetan Patil | 16h | 16h |
| 102 | 4 | Bug 9221 fix | 2d? | 2008-08-28 A | 2008-08-29 A |  | 100% |  |  | finish no earlier than 2008-08-29 | Chetan Patil | 16h | 16h |

| ID | WBS | Task | Duration | Start | Finish | Total slack |
| --- | --- | --- | --- | --- | --- | --- |
| 103 | 5 | **Milestone 2** | 15d? | 2008-07-14 | 2008-08-01 | 38d |
| 104 | 5.1 | **caB2B_Y3_010-Support WS enumerations data services** | 1d? | 2008-07-14 | 2008-07-14 | 52d |
| 105 | 5.1.1 | Requirement | 1d? | 2008-07-14 | 2008-07-14 | 52d |
| 106 | 5.1.2 | **Investigation** | 1d? | 2008-07-14 | 2008-07-14 | 52d |
| 107 | 5.1.2.1 | Investigate Component | 1d? | 2008-07-14 | 2008-07-14 | 52d |
| 108 | 5.1.2.2 | Developing Prototype | 1d? | 2008-07-14 | 2008-07-14 | 52d |
| 109 | 5.1.3 | Design | 1d? | 2008-07-14 | 2008-07-14 | 52d |
| 110 | 5.1.4 | **Implementation** | 1d? | 2008-07-14 | 2008-07-14 | 52d |
| 111 | 5.1.4.1 | Separating out Implementation Deployment Unit | 1d? | 2008-07-14 | 2008-07-14 | 52d |
| 112 | 5.1.4.2 | Changes needed in Deployment Process | 1d? | 2008-07-14 | 2008-07-14 | 52d |
| 113 | 5.2 | **caB2B_Y3_011-Need to revisit save / not save strategies-yet to clarify** | 1d? | 2008-07-14 | 2008-07-14 | 52d |
| 114 | 5.2.1 | Requirement | 1d? | 2008-07-14 | 2008-07-14 | 52d |
| 115 | 5.2.2 | **Investigation** | 1d? | 2008-07-14 | 2008-07-14 | 52d |
| 116 | 5.2.2.1 | Investigate Component | 1d? | 2008-07-14 | 2008-07-14 | 52d |
| 117 | 5.2.2.2 | Developing Prototype | 1d? | 2008-07-14 | 2008-07-14 | 52d |
| 118 | 5.2.3 | Design | 1d? | 2008-07-14 | 2008-07-14 | 52d |
| 119 | 5.2.4 | **Implementation** | 1d? | 2008-07-14 | 2008-07-14 | 52d |
| 120 | 5.2.4.1 | Separating out Implementation Deployment Unit | 1d? | 2008-07-14 | 2008-07-14 | 52d |
| 121 | 5.2.4.2 | Changes needed in Deployment Process | 1d? | 2008-07-14 | 2008-07-14 | 52d |
| 122 | 5.3 | **caB2B_Y3_012-Asynchronous of save data list** | 15d? | 2008-07-14 | 2008-08-01 | 38d |
| 123 | 5.3.1 | Requirement | 1d? | 2008-07-14 | 2008-07-14 | 52d |
| 124 | 5.3.2 | **Investigation** | 1d? | 2008-07-14 | 2008-07-14 | 52d |
| 125 | 5.3.2.1 | Investigate Component | 1d? | 2008-07-14 | 2008-07-14 | 52d |
| 126 | 5.3.2.2 | Developing Prototype | 1d? | 2008-07-14 | 2008-07-14 | 52d |
| 127 | 5.3.3 | Design | 1d? | 2008-07-14 | 2008-07-14 | 52d |

| ID | WBS | Task | Duration | Start | Finish | Total slack | Constraint |
| --- | --- | --- | --- | --- | --- | --- | --- |
| 128 | 5.3.4 | **Implementation** | 15d? | 2008-07-14 | 2008-08-01 | 38d |  |
| 129 | 5.3.4.1 | Separating out Implementation Deployment Unit | 1d? | 2008-07-14 | 2008-07-14 | 52d |  |
| 130 | 5.3.4.2 | Changes needed in Deployment Process | 1d? | 2008-08-01 | 2008-08-01 | 38d | finish no earlier than 2008-08-01 |
| 131 | 5.4 | **caB2B_Y3_013-intermodel joins for a group like washU, NCICB , Intermodel joins with pair of service instances** | 1d? | 2008-07-14 | 2008-07-14 | 52d |  |
| 132 | 5.4.1 | Requirement | 1d? | 2008-07-14 | 2008-07-14 | 52d |  |
| 133 | 5.4.2 | **Investigation** | 1d? | 2008-07-14 | 2008-07-14 | 52d |  |
| 134 | 5.4.2.1 | Investigate Component | 1d? | 2008-07-14 | 2008-07-14 | 52d |  |
| 135 | 5.4.2.2 | Developing Prototype | 1d? | 2008-07-14 | 2008-07-14 | 52d |  |
| 136 | 5.4.3 | Design | 1d? | 2008-07-14 | 2008-07-14 | 52d |  |
| 137 | 5.4.4 | **Implementation** | 1d? | 2008-07-14 | 2008-07-14 | 52d |  |
| 138 | 5.4.4.1 | Separating out Implementation Deployment Unit | 1d? | 2008-07-14 | 2008-07-14 | 52d |  |
| 139 | 5.4.4.2 | Changes needed in Deployment Process | 1d? | 2008-07-14 | 2008-07-14 | 52d |  |
| 140 | 5.5 | **caB2B_Y3_014-Experiments with multiple datalists, edit expr to add data list with way to re-query (more likely)** | 1d? | 2008-07-14 | 2008-07-14 | 52d |  |
| 141 | 5.5.1 | Requirement | 1d? | 2008-07-14 | 2008-07-14 | 52d |  |
| 142 | 5.5.2 | **Investigation** | 1d? | 2008-07-14 | 2008-07-14 | 52d |  |
| 143 | 5.5.2.1 | Investigate Component | 1d? | 2008-07-14 | 2008-07-14 | 52d |  |
| 144 | 5.5.2.2 | Developing Prototype | 1d? | 2008-07-14 | 2008-07-14 | 52d |  |
| 145 | 5.5.3 | Design | 1d? | 2008-07-14 | 2008-07-14 | 52d |  |
| 146 | 5.5.4 | **Implementation** | 1d? | 2008-07-14 | 2008-07-14 | 52d |  |
| 147 | 5.5.4.1 | Separating out Implementation Deployment Unit | 1d? | 2008-07-14 | 2008-07-14 | 52d |  |
| 148 | 5.5.4.2 | Changes needed in Deployment Process | 1d? | 2008-07-14 | 2008-07-14 | 52d |  |
| 149 | 5.6 | **caB2B_Y3_015-Support for getting probe data from caArray. For CEL files no need to bring data back to cab2b server, just get the URL and send it to analytical service** | 1d? | 2008-07-14 | 2008-07-14 | 52d |  |
| 150 | 5.6.1 | Requirement | 1d? | 2008-07-14 | 2008-07-14 | 52d |  |
| 151 | 5.6.2 | **Investigation** | 1d? | 2008-07-14 | 2008-07-14 | 52d |  |
| 152 | 5.6.2.1 | Investigate Component | 1d? | 2008-07-14 | 2008-07-14 | 52d |  |
| 153 | 5.6.2.2 | Developing Prototype | 1d? | 2008-07-14 | 2008-07-14 | 52d |  |
| 154 | 5.6.3 | Design | 1d? | 2008-07-14 | 2008-07-14 | 52d |  |

| ID | WBS | Task | Duration | Start | Finish | Total slack |
| --- | --- | --- | --- | --- | --- | --- |
| 155 | 5.6.4 | **Implementation** | 1d? | 2008-07-14 | 2008-07-14 | 52d |
| 156 | 5.6.4.1 | Separating out Implementation Deployment Unit | 1d? | 2008-07-14 | 2008-07-14 | 52d |
| 157 | 5.6.4.2 | Changes needed in Deployment Process | 1d? | 2008-07-14 | 2008-07-14 | 52d |
| 158 | 5.7 | **caB2B_Y3_016-Support basic analytical services (support for ICR services, if needed, do customizations)** | 1d? | 2008-07-14 | 2008-07-14 | 52d |
| 159 | 5.7.1 | Requirement | 1d? | 2008-07-14 | 2008-07-14 | 52d |
| 160 | 5.7.2 | **Investigation** | 1d? | 2008-07-14 | 2008-07-14 | 52d |
| 161 | 5.7.2.1 | Investigate Component | 1d? | 2008-07-14 | 2008-07-14 | 52d |
| 162 | 5.7.2.2 | Developing Prototype | 1d? | 2008-07-14 | 2008-07-14 | 52d |
| 163 | 5.7.3 | Design | 1d? | 2008-07-14 | 2008-07-14 | 52d |
| 164 | 5.7.4 | **Implementation** | 1d? | 2008-07-14 | 2008-07-14 | 52d |
| 165 | 5.7.4.1 | Separating out Implementation Deployment Unit | 1d? | 2008-07-14 | 2008-07-14 | 52d |
| 166 | 5.7.4.2 | Changes needed in Deployment Process | 1d? | 2008-07-14 | 2008-07-14 | 52d |
| 167 | 5.8 | **caB2B_Y3_017-Viewers for supported analytical services** | 1d? | 2008-07-14 | 2008-07-14 | 52d |
| 168 | 5.8.1 | Requirement | 1d? | 2008-07-14 | 2008-07-14 | 52d |
| 169 | 5.8.2 | **Investigation** | 1d? | 2008-07-14 | 2008-07-14 | 52d |
| 170 | 5.8.2.1 | Investigate Component | 1d? | 2008-07-14 | 2008-07-14 | 52d |
| 171 | 5.8.2.2 | Developing Prototype | 1d? | 2008-07-14 | 2008-07-14 | 52d |
| 172 | 5.8.3 | Design | 1d? | 2008-07-14 | 2008-07-14 | 52d |
| 173 | 5.8.4 | **Implementation** | 1d? | 2008-07-14 | 2008-07-14 | 52d |
| 174 | 5.8.4.1 | Separating out Implementation Deployment Unit | 1d? | 2008-07-14 | 2008-07-14 | 52d |
| 175 | 5.8.4.2 | Changes needed in Deployment Process | 1d? | 2008-07-14 | 2008-07-14 | 52d |
| 176 | 5.9 | **caB2B_Y3_018-Returning result of a federated query even if only one of the instances is failed** | 1d? | 2008-07-14 | 2008-07-14 | 52d |
| 177 | 5.9.1 | Requirement | 1d? | 2008-07-14 | 2008-07-14 | 52d |
| 178 | 5.9.2 | **Investigation** | 1d? | 2008-07-14 | 2008-07-14 | 52d |
| 179 | 5.9.2.1 | Investigate Component | 1d? | 2008-07-14 | 2008-07-14 | 52d |
| 180 | 5.9.2.2 | Developing Prototype | 1d? | 2008-07-14 | 2008-07-14 | 52d |
| 181 | 5.9.3 | Design | 1d? | 2008-07-14 | 2008-07-14 | 52d |

| ID | WBS | Task | Duration | Start | Finish | Total slack |
| --- | --- | --- | --- | --- | --- | --- |
| 182 | 5.9.4 | **Implementation** | 1d? | 2008-07-14 | 2008-07-14 | 52d |
| 183 | 5.9.4.1 | Separating out Implementation Deployment Unit | 1d? | 2008-07-14 | 2008-07-14 | 52d |
| 184 | 5.9.4.2 | Changes needed in Deployment Process | 1d? | 2008-07-14 | 2008-07-14 | 52d |
| 185 | 5.10 | **caB2B_Y3_019-Intermodel joins with multiple attributes** | 1d? | 2008-07-14 | 2008-07-14 | 52d |
| 186 | 5.10.1 | Requirement | 1d? | 2008-07-14 | 2008-07-14 | 52d |
| 187 | 5.10.2 | **Investigation** | 1d? | 2008-07-14 | 2008-07-14 | 52d |
| 188 | 5.10.2.1 | Investigate Component | 1d? | 2008-07-14 | 2008-07-14 | 52d |
| 189 | 5.10.2.2 | Developing Prototype | 1d? | 2008-07-14 | 2008-07-14 | 52d |
| 190 | 5.10.3 | Design | 1d? | 2008-07-14 | 2008-07-14 | 52d |
| 191 | 5.10.4 | **Implementation** | 1d? | 2008-07-14 | 2008-07-14 | 52d |
| 192 | 5.10.4.1 | Separating out Implementation Deployment Unit | 1d? | 2008-07-14 | 2008-07-14 | 52d |
| 193 | 5.10.4.2 | Changes needed in Deployment Process | 1d? | 2008-07-14 | 2008-07-14 | 52d |
| 194 | 5.11 | **QA cycle** | 1d? | 2008-07-14 | 2008-07-14 | 52d |
| 195 | 5.11.1 | Writing testcases for new functionalities | 1d? | 2008-07-14 | 2008-07-14 | 52d |
| 196 | 5.11.2 | Build 1 for QA | 1d? | 2008-07-14 | 2008-07-14 | 52d |
| 197 | 5.11.3 | Testing Build 1 | 1d? | 2008-07-14 | 2008-07-14 | 52d |
| 198 | 5.11.4 | Fix bugs reported in Build 1 | 1d? | 2008-07-14 | 2008-07-14 | 52d |
| 199 | 5.11.5 | Demo to washU users | 1d? | 2008-07-14 | 2008-07-14 | 52d |
| 200 | 5.11.6 | Build 2 for QA | 1d? | 2008-07-14 | 2008-07-14 | 52d |
| 201 | 5.11.7 | Testing of Build 2 (by QA + washU users) | 1d? | 2008-07-14 | 2008-07-14 | 52d |
| 202 | 5.11.8 | Regression Testing | 1d? | 2008-07-14 | 2008-07-14 | 52d |
| 203 | 5.11.9 | Fix bugs reported in (Build 2 + regression testing) | 1d? | 2008-07-14 | 2008-07-14 | 52d |
| 204 | 5.12 | **Release Candidate 1** | 1d? | 2008-07-14 | 2008-07-14 | 52d |
| 205 | 5.12.1 | Release to QA + washU users for accepatance | 1d? | 2008-07-14 | 2008-07-14 | 52d |
| 206 | 5.12.2 | Verification of fixed bugs | 1d? | 2008-07-14 | 2008-07-14 | 52d |
| 207 | 5.12.3 | UAT by QA + washU users | 1d? | 2008-07-14 | 2008-07-14 | 52d |
| 208 | 5.12.4 | UAT bug fixing | 1d? | 2008-07-14 | 2008-07-14 | 52d |

| ID | WBS | Task | Duration | Start | Finish | Total slack |
| --- | --- | --- | --- | --- | --- | --- |
| 209 | 5.13 | **Release activities** | 1d? | 2008-07-14 | 2008-07-14 | 52d |
| 210 | 5.13.1 | Updating washU servers | 1d? | 2008-07-14 | 2008-07-14 | 52d |
| 211 | 5.13.2 | Updating G-forge | 1d? | 2008-07-14 | 2008-07-14 | 52d |
| 212 | 5.13.3 | Updating website (cab2b.wustl.edu) | 1d? | 2008-07-14 | 2008-07-14 | 52d |
| 213 | 5.13.4 | Updating caBIG Tools Page | 1d? | 2008-07-14 | 2008-07-14 | 52d |
| 214 | 5.14 | **Documentation** | 1d? | 2008-07-14 | 2008-07-14 | 52d |
| 215 | 5.14.1 | Admin end user manual | 1d? | 2008-07-14 | 2008-07-14 | 52d |
| 216 | 5.14.2 | Admin design document | 1d? | 2008-07-14 | 2008-07-14 | 52d |
| 217 | 5.14.3 | Update design document | 1d? | 2008-07-14 | 2008-07-14 | 52d |
| 218 | 5.14.4 | Update end user manual update | 1d? | 2008-07-14 | 2008-07-14 | 52d |
| 219 | 5.15 | **Documentation Review** | 1d? | 2008-07-14 | 2008-07-14 | 52d |
| 220 | 5.15.1 | Review by NCICB Leads | 1d? | 2008-07-14 | 2008-07-14 | 52d |
| 221 | 5.15.2 | D&T Review | 1d? | 2008-07-14 | 2008-07-14 | 52d |
| 222 | 5.16 | Final Documentation | 1d? | 2008-07-14 | 2008-07-14 | 52d |
